Schedule from MS Project, 2014-10-06 to 2014-11-11.

## Calendars

- Standard: Mon-Fri 08:00-12:00, 13:00-17:00; Sat-Sun off.

## Resources

| Resource |
| --- |
| Rusty |
| Dan |
| Noah |
| Branden |

## Schedule

| ID | WBS | Task | Type | Duration | Start | Finish | Predecessors | Total slack | Resources | Work |
| --- | --- | --- | --- | --- | --- | --- | --- | --- | --- | --- |
| 1 | 1 | Project Start | milestone, manual | 0d | 2014-10-06 | 2014-10-06 |  |  |  |  |
| 2 | 2 | **Project Planning** |  | 1d? | 2014-10-06 | 2014-10-06 | 1 | 0d |  | 48h |
| 3 | 2.1 | Determine Pros/Cons of all ideas generated. | manual | 1d | 2014-10-06 | 2014-10-06 |  |  | Branden; Dan; Noah; Rusty | 32h |
| 4 | 2.2 | Complete Decision Matrix. | manual | 1d | 2014-10-06 | 2014-10-06 |  |  | Dan; Rusty | 16h |
| 5 | 2.3 | Complete Task Schedule. | manual | 1d? | 2014-10-06 | 2014-10-06 |  |  |  |  |
| 6 | 3 | **Research Tasks** |  | 1d | 2014-11-07 | 2014-11-07 | 2 | 0d |  | 32h |
| 7 | 3.1 | Research interfacing with Atmel processor. | manual | 1d | 2014-11-07 | 2014-11-07 |  |  | Noah; Rusty | 16h |
| 8 | 3.2 | Determine sensor type and source. | manual | 1d | 2014-11-07 | 2014-11-07 |  |  | Dan; Rusty | 16h |
| 9 | 4 | **Project Design Specifications** |  | 1d | 2014-10-06 | 2014-10-06 | 1 | 0d |  | 40h |
| 10 | 4.1 | Decide on basic project specifications. | manual | 1d | 2014-10-06 | 2014-10-06 |  |  | Branden; Dan; Noah; Rusty | 32h |
| 11 | 4.2 | Complete project proposal. | manual | 1d | 2014-10-06 | 2014-10-06 |  |  | Rusty | 8h |
| 12 | 5 | **Schematic Design** |  | 1d? | 2014-11-10 | 2014-11-10 | 6 | 0d |  | 16h |
| 13 | 5.1 | Display Board Layout with ERC | manual | 1d | 2014-11-10 | 2014-11-10 |  |  | Dan | 8h |
| 14 | 5.2 | Main Board Layout with ERC | manual | 1d | 2014-11-10 | 2014-11-10 |  |  | Noah | 8h |
| 15 | 5.3 | Revise | manual | 1d? | 2014-11-10 | 2014-11-10 |  |  |  |  |
| 16 | 6 | **Program Code** |  | 1d? | 2014-11-07 | 2014-11-10 | 6 | 0d |  |  |
| 17 | 6.1 | Design polling of sensors for measurements. | manual | 1d? | 2014-11-07 | 2014-11-10 |  |  |  |  |
| 18 | 6.2 | Assign output values based on display design for lighting patterns. | manual | 1d? | 2014-11-07 | 2014-11-10 |  |  |  |  |
| 19 | 7 | **Prototype and Testing** |  | 1d? | 2014-11-10 | 2014-11-11 | 12, 16 | 0d |  |  |
| 20 | 7.1 | Breadboard display and test using all valid inputs. | manual | 1d? | 2014-11-10 | 2014-11-11 |  |  |  |  |
| 21 | 7.2 | Test built display prototype using inputs from Atmel processor. | manual | 1d? | 2014-11-10 | 2014-11-11 |  |  |  |  |
| 22 | 7.3 | Test controlling individual display lights using Atmel processor. | manual | 1d? | 2014-11-10 | 2014-11-11 |  |  |  |  |
| 23 | 7.4 | Test individual sensors for range. | manual | 1d? | 2014-11-10 | 2014-11-11 |  |  |  |  |
| 24 | 8 | **Board Layout** |  | 1d? | 2014-11-07 | 2014-11-07 |  | 0d |  |  |
| 25 | 8.1 | Main board Layout with DRC | manual | 1d? | 2014-11-07 | 2014-11-07 |  |  |  |  |
| 26 | 8.2 | Display Board Layout with DRC | manual | 1d? | 2014-11-07 | 2014-11-07 |  |  |  |  |
| 27 | 8.3 | Revise Main broad layout with instructor feedback. | manual | 1d? | 2014-11-07 | 2014-11-07 |  |  |  |  |
| 28 | 8.4 | Revise display board layout with instructor feedback. | manual | 1d? | 2014-11-07 | 2014-11-07 |  |  |  |  |

| ID | WBS | Task | Type | Duration | Start | Finish | Predecessors | Total slack | Resources | Work |
| --- | --- | --- | --- | --- | --- | --- | --- | --- | --- | --- |
| 29 | 9 | **Part Sourcing** |  | 1d? | 2014-11-07 | 2014-11-10 |  | 0d |  | 8h |
| 30 | 9.1 | Order DIP package parts for prototype. | manual | 1d? | 2014-11-07 | 2014-11-10 |  |  |  |  |
| 31 | 9.2 | Order sensors. | milestone | 0d | 2014-11-07 | 2014-11-07 | 8 | 2d |  |  |
| 32 | 9.3 | Order surface mount parts for display build. | manual | 1d | 2014-11-07 | 2014-11-10 |  |  | Dan | 8h |
| 33 | 9.4 | Order surface mount parts for main board build. | manual | 1d? | 2014-11-07 | 2014-11-10 |  |  |  |  |
| 34 | 10 | **Review Tasks** |  | 26d | 2014-10-07 | 2014-11-11 |  | 0d |  |  |
| 35 | 10.1 | Review Decision Matrix. | manual | 1d | 2014-10-07 | 2014-10-07 | 4 |  |  |  |
| 36 | 10.2 | Review Project Proposal. | manual | 1d | 2014-10-07 | 2014-10-07 | 11 |  |  |  |
| 37 | 10.3 | Review Proposed Schedule. | manual | 1d | 2014-10-07 | 2014-10-07 | 5 |  |  |  |
| 38 | 10.4 | Review Schematics Prior to Instructor Review. | manual | 1d | 2014-11-11 | 2014-11-11 | 13, 14 |  |  |  |
| 39 | 10.5 | Review Board Layout Prior to Instructor Review. |  | 1d | 2014-11-10 | 2014-11-10 | 25, 26 | 0d |  |  |
| 40 | 10.6 | Review Board Layout Prior to Instructor Review. | manual | 1d | 2014-11-11 | 2014-11-11 | 39 |  |  |  |
| 41 | 11 | **Documentation Tasks** |  | 3d? | 2014-11-07 | 2014-11-11 |  | 0d |  | 104h |
| 42 | 11.1 | Create Repository and add all users. | manual | 1d | 2014-11-07 | 2014-11-07 |  |  | Dan | 8h |
| 43 | 11.2 | Design basic wiki layout to meet assigned requirements. | manual | 1d? | 2014-11-07 | 2014-11-07 |  |  |  |  |
| 44 | 11.3 | 26OCT Weekly Progress Report | manual | 1d | 2014-11-07 | 2014-11-07 |  |  | Branden; Dan; Noah; Rusty | 32h |
| 45 | 11.4 | 02NOV Weekly Progress Report | manual | 1d | 2014-11-10 | 2014-11-10 | 44 |  | Branden; Dan; Noah; Rusty | 32h |
| 46 | 11.5 | 09NOV Weekly Progress Report | manual | 1d | 2014-11-11 | 2014-11-11 | 45 |  | Branden; Dan; Noah; Rusty | 32h |
| 47 | 12 | **Final Presentation** |  | 1d? | 2014-11-07 | 2014-11-07 |  | 0d |  |  |
| 48 | 12.1 | Prepare Presentation Materials | manual | 1d? | 2014-11-07 | 2014-11-07 |  |  |  |  |
| 49 | 12.2 | Full Group Practice | manual | 1d? | 2014-11-07 | 2014-11-07 |  |  |  |  |
| 50 | 12.3 | Schedule Final Presentation | manual | 1d? | 2014-11-07 | 2014-11-07 |  |  |  |  |
| 51 | 12.4 | Complete Presentation | manual | 1d? | 2014-11-07 | 2014-11-07 |  |  |  |  |
